# WBS Teresa martin mejoras

Schedule from MS Project, 2015-04-27 to 2015-08-14, costs in $.

## Calendars

- Estándar: Mon-Fri 09:00-13:00, 15:00-19:00; Sat-Sun off.

## Resources

| Resource |
| --- |
| Lider |
| Analista |
| Diseñador |
| Programador |
| Tester |

## Schedule

| ID | WBS | Task | Duration | Start | Finish | Predecessors | Total slack | Free slack | Constraint | Resources | Work | Cost |
| --- | --- | --- | --- | --- | --- | --- | --- | --- | --- | --- | --- | --- |
| 1 | 1 | Teresa Martin | 80d? | 2015-04-27 09:00 | 2015-08-14 19:00 |  | 0d |  | start no earlier than 2015-04-27 09:00 |  |  |  |
| 2 | 2 | **1- Análisis** | 8d | 2015-04-27 09:00 | 2015-05-06 19:00 |  |  |  |  |  | 58h | 11,294 |
| 3 | 2.1 | 1.1-Carta de iniciación del proyecto. | 2h | 2015-04-27 09:00 | 2015-04-27 11:00 |  | 42d |  |  | Lider | 2h | 466 |
| 4 | 2.2 | **1.2-Elicitacion** | 1.75d | 2015-04-27 09:00 | 2015-04-28 17:00 |  | 35.12d | 0.25d |  |  | 14h | 2,182 |
| 5 | 2.2.1 | 1.2.1- Evaluar proveedores de req. a entrevistar | 4h | 2015-04-27 09:00 | 2015-04-27 13:00 |  | 35.25d | 0d |  | Lider | 4h | 932 |
| 6 | 2.2.2 | 1.2.2- Definicion de estrategia de recoleccion de req. | 4h | 2015-04-27 15:00 | 2015-04-27 19:00 | 5 | 35.12d | 0d | start no earlier than 2015-04-07 09:00 | Analista | 4h | 500 |
| 7 | 2.2.3 | 1.2.3- Planificar reuniones de elicitación de req. | 3h | 2015-04-28 09:00 | 2015-04-28 12:00 | 6 | 35.12d | 0d |  | Analista | 3h | 375 |
| 8 | 2.2.4 | 1.2.4- Identificar procesos del sistema. | 3h | 2015-04-28 12:00 | 2015-04-28 17:00 | 7 | 35.25d | 0d | start no earlier than 2015-04-08 09:00 | Analista | 3h | 375 |
| 9 | 2.3 | 1.3- Minuta de reunión de arranque. | 2h | 2015-04-28 17:00 | 2015-04-28 19:00 | 8 | 35.25d | 0d | start no earlier than 2015-04-08 09:00 | Lider | 2h | 466 |
| 10 | 2.4 | **1.4- Planeación de proyecto.** | 2d | 2015-04-29 09:00 | 2015-04-30 19:00 | 4 | 35.12d | 0.75d |  |  | 16h | 3,620 |
| 11 | 2.4.1 | 1.4.1- Descripción de la problemática. | 1h | 2015-04-29 09:00 | 2015-04-29 10:00 | 9 | 35.12d | 0d |  | Analista | 1h | 125 |
| 12 | 2.4.2 | 1.4.2- Organigrama. | 1h | 2015-04-29 10:00 | 2015-04-29 11:00 | 11 | 35.25d | 0d |  | Lider | 1h | 233 |
| 13 | 2.4.3 | 1.4.3- Alcance. | 1h | 2015-04-29 11:00 | 2015-04-29 12:00 | 12 | 35.25d | 0d |  | Lider | 1h | 233 |
| 14 | 2.4.4 | 1.4.4- Elementos clave para su planeación, monitoreo y control. | 2h | 2015-04-29 12:00 | 2015-04-29 16:00 | 13 | 35.25d | 0d |  | Lider | 2h | 466 |
| 15 | 2.4.5 | 1.4.5- Perfiles de los participantes y del administrador. | 3h | 2015-04-29 16:00 | 2015-04-29 19:00 | 14 | 35.25d | 0d |  | Lider | 3h | 699 |
| 16 | 2.4.6 | **1.4.6- Diagrama de Gantt(Wbs).** | 1d | 2015-04-30 09:00 | 2015-04-30 19:00 | 15 | 35.12d |  |  |  | 8h | 1,864 |
| 17 | 2.4.6.1 | 1.4.6.1- Matriz de responsabilidades. | 4h | 2015-04-30 09:00 | 2015-04-30 13:00 | 15 | 35.12d | 0d |  | Lider | 4h | 932 |
| 18 | 2.4.6.2 | 1.4.6.2- Diagrama de la ruta critica. | 4h | 2015-04-30 15:00 | 2015-04-30 19:00 | 17 | 35.12d | 0d |  | Lider | 4h | 932 |
| 19 | 2.5 | 1.4.7- Lista de factores clave de desempeño. | 3h | 2015-05-01 09:00 | 2015-05-01 12:00 | 18 | 35.12d | 0d |  | Lider | 3h | 699 |
| 20 | 2.6 | 1.4.8- Matriz de comunicación y justificación. | 3h | 2015-05-01 12:00 | 2015-05-01 17:00 | 19 | 35.25d | 0d |  | Lider | 3h | 699 |
| 21 | 2.7 | **1.5- Definición de estandar de calidad.** | 1d | 2015-05-01 17:00 | 2015-05-04 17:00 | 10 | 35.12d | 0d |  |  | 8h | 1,864 |
| 22 | 2.7.1 | 1.5.1- Gestión del alcance. | 2h | 2015-05-01 17:00 | 2015-05-01 19:00 | 20 | 35.25d | 0d | start no earlier than 2015-04-14 09:00 | Lider | 2h | 466 |
| 23 | 2.7.2 | 1.5.2- Gestión del tiempo. | 2h | 2015-05-04 09:00 | 2015-05-04 11:00 | 22 | 35.12d | 0d |  | Lider | 2h | 466 |
| 24 | 2.7.3 | 1.5.3- Gestión de costos. | 2h | 2015-05-04 11:00 | 2015-05-04 13:00 | 23 | 35.25d | 0d |  | Lider | 2h | 466 |
| 25 | 2.7.4 | 1.5.4- Gestión de calidad. | 2h | 2015-05-04 15:00 | 2015-05-04 17:00 | 24 | 35.12d | 0d |  | Lider | 2h | 466 |

| ID | WBS | Task | Duration | Start | Finish | Predecessors | Total slack | Free slack | Constraint | Resources | Work | Cost |
| --- | --- | --- | --- | --- | --- | --- | --- | --- | --- | --- | --- | --- |
| 26 | 2.8 | **1.6- Definicion de ciclo de vida.** | 0.25d | 2015-05-04 17:00 | 2015-05-04 19:00 | 21 | 35.12d | 0d |  |  | 2h | 250 |
| 27 | 2.8.1 | 1.6.1- Justificación de los procesos. | 2h | 2015-05-04 17:00 | 2015-05-04 19:00 | 25 | 35.25d | 0d |  | Analista | 2h | 250 |
| 28 | 2.9 | **1.7- Script(plantilla) del proceso de admón.** | 1d | 2015-05-05 09:00 | 2015-05-05 19:00 | 26 | 35.25d |  |  |  |  |  |
| 29 | 2.9.1 | 1.7.1- Políticas. | 1d | 2015-05-05 09:00 | 2015-05-05 19:00 | 27 | 35.25d |  |  |  |  |  |
| 30 | 2.10 | 1.8- Mercado meta. | 2h | 2015-05-05 09:00 | 2015-05-05 11:00 | 27 | 36d |  |  | Analista | 2h | 250 |
| 31 | 2.11 | 1.9- Justificar el patrón de diseño a utilizar. | 2h | 2015-05-05 09:00 | 2015-05-05 11:00 | 27 | 36d |  |  | Diseñador | 2h | 298 |
| 32 | 2.12 | 1.10- Identificar los req. funcionales. | 3h | 2015-05-05 09:00 | 2015-05-05 12:00 | 27 | 35.12d | 0d |  | Analista | 3h | 375 |
| 33 | 2.13 | 1.11- Identificar los req. no funcionales. | 1h | 2015-05-05 12:00 | 2015-05-05 13:00 | 32 | 35.75d | 1.5d |  | Analista | 1h | 125 |
| 34 | 3 | **2- Diseño** | 4.88d | 2015-05-07 09:00 | 2015-05-13 18:00 | 2 | 33.62d | 0d |  |  | 39h | 5,067 |
| 35 | 3.1 | 2.1- Estructura del Proyecto. | 2h | 2015-05-07 09:00 | 2015-05-07 11:00 | 33 | 33.62d | 0d |  | Analista | 2h | 250 |
| 36 | 3.2 | 2.2-Diagrama de actividades. | 2h | 2015-05-07 11:00 | 2015-05-07 13:00 | 35 | 34.25d | 0d |  | Analista | 2h | 250 |
| 37 | 3.3 | 2.3- Diagramas de casos de uso. | 4h | 2015-05-07 15:00 | 2015-05-07 19:00 | 36 | 33.62d | 0d |  | Analista | 4h | 500 |
| 38 | 3.4 | 2.4- Diagramas de secuencia. | 3h | 2015-05-08 09:00 | 2015-05-08 12:00 | 37 | 33.62d | 0d | start no earlier than 2015-04-20 09:00 | Analista | 3h | 375 |
| 39 | 3.5 | 2.5- Diagra de clases. | 4h | 2015-05-08 12:00 | 2015-05-08 18:00 | 38 | 34.25d | 0d | start no earlier than 2015-04-20 09:00 | Analista | 4h | 500 |
| 40 | 3.6 | 2.6- Diagrama de rol. | 2h | 2015-05-08 18:00 | 2015-05-11 10:00 | 39 | 34.25d | 0d | start no earlier than 2015-04-21 09:00 | Analista | 2h | 250 |
| 41 | 3.7 | 2.7-Diagrama de interación. | 2h | 2015-05-11 10:00 | 2015-05-11 12:00 | 40 | 34.25d | 0d | start no earlier than 2015-04-21 09:00 | Analista | 2h | 250 |
| 42 | 3.8 | 2.8-Diagrama de componentes. | 2h | 2015-05-11 12:00 | 2015-05-11 16:00 | 41 | 34.25d | 0d | start no earlier than 2015-04-21 09:00 | Analista | 2h | 250 |
| 43 | 3.9 | 2.9- Diagrama despliegue. | 2h | 2015-05-11 16:00 | 2015-05-11 18:00 | 42 | 34.25d | 0d | start no earlier than 2015-04-21 09:00 | Analista | 2h | 250 |
| 44 | 3.10 | **2.10- Base de datos.** | 1d | 2015-05-11 18:00 | 2015-05-12 18:00 | 43 | 33.62d |  |  |  | 8h | 1,000 |
| 45 | 3.10.1 | 2.10.1- Diagrama entidad relación. | 4h | 2015-05-11 18:00 | 2015-05-12 12:00 | 43 | 34.25d | 0d |  | Analista | 4h | 500 |
| 46 | 3.10.2 | 2.10.2-Diagrama relacional. | 4h | 2015-05-12 12:00 | 2015-05-12 18:00 | 45 | 34.25d | 0d |  | Analista | 4h | 500 |
| 47 | 3.11 | 2.11- Maquetación. | 4h | 2015-05-12 18:00 | 2015-05-13 12:00 | 46 | 34.25d | 0d |  | Diseñador | 4h | 596 |
| 48 | 3.12 | 2.12- Mapa de naveción. | 4h | 2015-05-13 12:00 | 2015-05-13 18:00 | 47 | 34.25d |  |  | Diseñador | 4h | 596 |
| 49 | 4 | **3- Codificación** | 10.62d | 2015-05-13 18:00 | 2015-05-28 13:00 | 34 | 33.62d | 0d |  |  | 101h | 12,826 |
| 50 | 4.1 | 3.1-Creación de la DB. | 3h | 2015-05-13 18:00 | 2015-05-14 11:00 | 34 | 34.25d | 0d |  | Programador | 3h | 330 |
| 51 | 4.2 | 3.2-Conexión a DB. | 2h | 2015-05-14 11:00 | 2015-05-14 13:00 | 50 | 34.25d | 0d |  | Programador | 2h | 220 |

| ID | WBS | Task | Duration | Start | Finish | Predecessors | Total slack | Free slack | Constraint | Resources | Work | Cost |
| --- | --- | --- | --- | --- | --- | --- | --- | --- | --- | --- | --- | --- |
| 52 | 4.3 | **3.3- Módulo alumnos** | 4d | 2015-05-14 15:00 | 2015-05-20 13:00 | 51 | 33.62d | 0d |  |  | 32h | 4,144 |
| 53 | 4.3.1 | 3.3.1-Interfaz. | 16h | 2015-05-14 15:00 | 2015-05-18 13:00 | 51 | 33.62d | 0d | start no earlier than 2015-04-27 09:00 | Diseñador | 16h | 2,384 |
| 54 | 4.3.2 | 3.3.3-Alta de alumno. | 6h | 2015-05-18 15:00 | 2015-05-19 11:00 | 53 | 33.62d | 0d |  | Programador | 6h | 660 |
| 55 | 4.3.3 | 3.3.4-Baja de alumno. | 2h | 2015-05-19 11:00 | 2015-05-19 13:00 | 54 | 34.25d | 0d |  | Programador | 2h | 220 |
| 56 | 4.3.4 | 3.3.5-Actualización de alumno. | 5h | 2015-05-19 15:00 | 2015-05-20 10:00 | 55 | 33.62d | 0d | start no earlier than 2015-04-30 09:00 | Programador | 5h | 550 |
| 57 | 4.3.5 | 3.3.6- Consultar alumnos. | 3h | 2015-05-20 10:00 | 2015-05-20 13:00 | 56 | 34.25d | 0d | start no earlier than 2015-04-30 09:00 | Programador | 3h | 330 |
| 58 | 4.4 | **3.4-Módulo pagos** | 1.75d | 2015-05-20 15:00 | 2015-05-22 11:00 | 52 | 33.62d |  |  |  | 14h | 1,696 |
| 59 | 4.4.1 | 3.4.1- interfaz. | 4h | 2015-05-20 15:00 | 2015-05-20 19:00 | 57 | 33.62d | 0d |  | Diseñador | 4h | 596 |
| 60 | 4.4.2 | 3.4.2- Pago de colegiaturas. | 4h | 2015-05-21 09:00 | 2015-05-21 13:00 | 59 | 33.62d | 0d |  | Programador | 4h | 440 |
| 61 | 4.4.3 | 3.4.3- Editar pago. | 3h | 2015-05-21 15:00 | 2015-05-21 18:00 | 60 | 33.62d | 0d |  | Programador | 3h | 330 |
| 62 | 4.4.4 | 3.4.4- Eliminar pago. | 1h | 2015-05-21 18:00 | 2015-05-21 19:00 | 61 | 34.25d | 0d |  | Programador | 1h | 110 |
| 63 | 4.4.5 | 3.4.5- Consultar pago. | 2h | 2015-05-22 09:00 | 2015-05-22 11:00 | 62 | 33.62d | 0d |  | Programador | 2h | 220 |
| 64 | 4.5 | **3.5- Módulo becas** | 2.5d | 2015-05-22 11:00 | 2015-05-26 17:00 | 63 | 33.62d | 0d |  |  | 20h | 2,590 |
| 65 | 4.5.1 | 3.5.1- Interfaz. | 10h | 2015-05-22 11:00 | 2015-05-25 13:00 | 63 | 34.25d | 0d | finish no earlier than 2015-05-05 19:00 | Diseñador | 10h | 1,490 |
| 66 | 4.5.2 | 3.5.2- Asignar beca. | 3h | 2015-05-25 15:00 | 2015-05-25 18:00 | 65 | 33.62d | 0d |  | Programador | 3h | 330 |
| 67 | 4.5.3 | 3.5.3- Editar beca. | 3h | 2015-05-25 18:00 | 2015-05-26 11:00 | 66 | 34.25d | 0d | start no earlier than 2015-05-06 09:00 | Programador | 3h | 330 |
| 68 | 4.5.4 | 3.5.4- Eliminar beca. | 2h | 2015-05-26 11:00 | 2015-05-26 13:00 | 67 | 34.25d | 0d | start no earlier than 2015-05-07 09:00 | Programador | 2h | 220 |
| 69 | 4.5.5 | 3.5.6- Consultar beca. | 2h | 2015-05-26 15:00 | 2015-05-26 17:00 | 68 | 33.62d | 0d | start no earlier than 2015-05-07 09:00 | Programador | 2h | 220 |
| 70 | 4.6 | **3.6- Módulo Reportes** | 1d | 2015-05-26 17:00 | 2015-05-27 17:00 | 64 | 33.62d | 0d |  |  | 16h | 2,072 |
| 71 | 4.6.1 | 3.6.1- Interfaz. | 8h | 2015-05-26 17:00 | 2015-05-27 17:00 | 64 | 34.25d |  | finish no earlier than 2015-05-07 19:00 | Diseñador | 8h | 1,192 |
| 72 | 4.6.2 | 3.6.2- Consultar pagos. | 2h | 2015-05-26 17:00 | 2015-05-26 19:00 | 69 | 34.25d | 0d | start no earlier than 2015-05-08 09:00 | Programador | 2h | 220 |
| 73 | 4.6.3 | 3.6.3- Consultar alumnos. | 2h | 2015-05-27 09:00 | 2015-05-27 11:00 | 72 | 33.62d | 0d | start no earlier than 2015-05-08 09:00 | Programador | 2h | 220 |
| 74 | 4.6.4 | 3.6.4- Colsultar becas. | 2h | 2015-05-27 11:00 | 2015-05-27 13:00 | 73 | 34.25d | 0d | start no earlier than 2015-05-08 09:00 | Programador | 2h | 220 |
| 75 | 4.6.5 | 3.6.5- Consultar ciclos. | 2h | 2015-05-27 15:00 | 2015-05-27 17:00 | 74 | 33.62d | 0d | start no earlier than 2015-05-08 09:00 | Programador | 2h | 220 |

| ID | WBS | Task | Duration | Start | Finish | Predecessors | Total slack | Free slack | Constraint | Resources | Work | Cost |
| --- | --- | --- | --- | --- | --- | --- | --- | --- | --- | --- | --- | --- |
| 76 | 4.7 | **3.7- Módulo Ciclos** | 0.75d | 2015-05-27 17:00 | 2015-05-28 13:00 | 70 | 33.62d |  |  |  | 14h | 1,774 |
| 77 | 4.7.1 | 3.7.1- Interfaz. | 6h | 2015-05-27 17:00 | 2015-05-28 13:00 | 75 | 34.25d |  |  | Diseñador | 6h | 894 |
| 78 | 4.7.2 | 3.7.2- Asignar ciclo. | 2h | 2015-05-27 17:00 | 2015-05-27 19:00 |  | 34.5d | 0d | start no earlier than 2015-05-12 09:00 | Programador | 2h | 220 |
| 79 | 4.7.3 | 3.7.3- Editar ciclo. | 2h | 2015-05-28 09:00 | 2015-05-28 11:00 | 78 | 34.5d |  |  | Programador | 2h | 220 |
| 80 | 4.7.4 | 3.7.4- Eliminar ciclo. | 2h | 2015-05-28 09:00 | 2015-05-28 11:00 | 78 | 34.5d |  |  | Programador | 2h | 220 |
| 81 | 4.7.5 | 3.7.5- Consultar ciclo. | 2h | 2015-05-28 09:00 | 2015-05-28 11:00 | 78 | 33.62d | 0.25d |  | Programador | 2h | 220 |
| 82 | 5 | **4.-Pruebas** | 1d | 2015-05-28 15:00 | 2015-05-29 13:00 | 49 | 33.38d | 0d |  |  | 16h | 1,840 |
| 83 | 5.1 | 4.1-Pruebas unitarias. | 4h | 2015-05-28 15:00 | 2015-05-28 19:00 | 81 | 33.88d |  |  | Tester | 4h | 460 |
| 84 | 5.2 | 4.2-Pruebas de integración. | 4h | 2015-05-28 15:00 | 2015-05-28 19:00 | 81 | 33.38d | 0d |  | Tester | 4h | 460 |
| 85 | 5.3 | 4.3-Pruebas de rendimiento. | 4h | 2015-05-29 09:00 | 2015-05-29 13:00 | 84 | 33.38d |  |  | Tester | 4h | 460 |
| 86 | 5.4 | 4.4-Pruebas del sistema. | 4h | 2015-05-29 09:00 | 2015-05-29 13:00 | 84 | 33.38d |  |  | Tester | 4h | 460 |
| 87 | 6 | 5.- Entrega Versión 0.1 | 2h | 2015-05-29 15:00 | 2015-05-29 17:00 | 82 | 33.38d | 0d | start no earlier than 2015-05-14 09:00 | Lider | 2h | 466 |
| 88 | 7 | **1- Análisis versión 0.1** | 1.5d | 2015-05-29 17:00 | 2015-06-02 11:00 | 87 | 33d | 0d |  |  | 9h | 1,449 |
| 89 | 7.1 | 1.1- Identificar procesos del sistema. | 3h | 2015-05-29 17:00 | 2015-06-01 10:00 | 87 | 34.25d |  |  | Lider | 3h | 699 |
| 90 | 7.2 | 1.2- Minuta de reunión. | 2h | 2015-06-01 10:00 | 2015-06-01 12:00 | 89 | 33.38d | 0.38d |  | Analista | 2h | 250 |
| 91 | 7.3 | 1.3- Identificar los req. funcionales. | 2h | 2015-06-01 17:00 | 2015-06-01 19:00 | 90 | 33d | 0d | finish no earlier than 2015-06-01 19:00 | Analista | 2h | 250 |
| 92 | 7.4 | 1.4- Identificar los req. no funcionales. | 2h | 2015-06-02 09:00 | 2015-06-02 11:00 | 91 | 33d | 0d |  | Analista | 2h | 250 |
| 93 | 8 | **2- Diseño versión 0.1** | 1.12d | 2015-06-02 11:00 | 2015-06-03 12:00 | 88 | 33d | 0d |  |  | 9h | 1,173 |
| 94 | 8.1 | 2.1- Diagrama de rol. | 2h | 2015-06-02 11:00 | 2015-06-02 13:00 | 92 | 33d | 0d |  | Analista | 2h | 250 |
| 95 | 8.2 | 2.2-Diagrama de interación. | 2h | 2015-06-02 15:00 | 2015-06-02 17:00 | 94 | 33d | 0d |  | Analista | 2h | 250 |
| 96 | 8.3 | 2.3- Diagrama de componentes. | 2h | 2015-06-02 17:00 | 2015-06-02 19:00 | 95 | 33d | 0d | start no earlier than 2015-05-14 09:00 | Analista | 2h | 250 |
| 97 | 8.4 | 2.4- Diagrama despliegue. | 1h | 2015-06-03 09:00 | 2015-06-03 10:00 | 96 | 33d | 0d | start no earlier than 2015-05-14 09:00 | Analista | 1h | 125 |
| 98 | 8.5 | 2.5- Maquetación. | 1h | 2015-06-03 10:00 | 2015-06-03 11:00 | 97 | 33d | 0d |  | Diseñador | 1h | 149 |
| 99 | 8.6 | 2.6- Mapa de naveción. | 1h | 2015-06-03 11:00 | 2015-06-03 12:00 | 98 | 33d | 0d | start no earlier than 2015-05-14 09:00 | Diseñador | 1h | 149 |

| ID | WBS | Task | Duration | Start | Finish | Predecessors | Total slack | Free slack | Resources | Work | Cost |
| --- | --- | --- | --- | --- | --- | --- | --- | --- | --- | --- | --- |
| 100 | 9 | **3- Codificación versión 0.1** | 10d | 2015-06-03 12:00 | 2015-06-17 12:00 | 93 | 33d | 0d |  | 160h | 20,720 |
| 101 | 9.1 | **3.1-Corrección en alguno de los módulos.** | 10d | 2015-06-03 12:00 | 2015-06-17 12:00 | 99 | 33d |  |  | 160h | 20,720 |
| 102 | 9.1.1 | 3.1.1- Módulo alumnos versión0.1. | 16h | 2015-06-03 12:00 | 2015-06-05 12:00 | 99 | 33d | 0d | Programador; Diseñador | 32h | 4,144 |
| 103 | 9.1.2 | 3.1.2- Módulo pagos versión0.1. | 16h | 2015-06-05 12:00 | 2015-06-09 12:00 | 102 | 33d | 0d | Programador; Diseñador | 32h | 4,144 |
| 104 | 9.1.3 | 3.1.3- Módulo becas versión0.1. | 16h | 2015-06-09 12:00 | 2015-06-11 12:00 | 103 | 33d | 0d | Programador; Diseñador | 32h | 4,144 |
| 105 | 9.1.4 | 3.1.4- Módulo reportes versión0.1. | 16h | 2015-06-11 12:00 | 2015-06-15 12:00 | 104 | 33d | 0d | Programador; Diseñador | 32h | 4,144 |
| 106 | 9.1.5 | 3.1.5- Módulo ciclos versión0.1. | 16h | 2015-06-15 12:00 | 2015-06-17 12:00 | 105 | 33d | 0d | Diseñador; Programador | 32h | 4,144 |
| 107 | 10 | **4.-Pruebas versión 0.1** | 2d | 2015-06-17 12:00 | 2015-06-19 12:00 | 100 | 33d | 0d |  | 16h | 1,840 |
| 108 | 10.1 | 4.1-Pruebas unitarias versión0.1. | 4h | 2015-06-17 12:00 | 2015-06-17 18:00 | 106 | 33d | 0d | Tester | 4h | 460 |
| 109 | 10.2 | 4.2-Pruebas de integración versión0.1. | 4h | 2015-06-17 18:00 | 2015-06-18 12:00 | 108 | 33d | 0d | Tester | 4h | 460 |
| 110 | 10.3 | 4.3-Pruebas de rendimiento versión0.1. | 4h | 2015-06-18 12:00 | 2015-06-18 18:00 | 109 | 33d | 0d | Tester | 4h | 460 |
| 111 | 10.4 | 4.4-Pruebas del sistema versión0.1. | 4h | 2015-06-18 18:00 | 2015-06-19 12:00 | 110 | 33d |  | Tester | 4h | 460 |
| 112 | 11 | 5.- Entrega versión 0.2 | 3h | 2015-06-19 12:00 | 2015-06-19 17:00 | 107 | 33d | 0d | Lider | 3h | 699 |
| 113 | 12 | **1- Análisis versió 0.2** | 0.12d | 2015-06-19 17:00 | 2015-06-19 18:00 | 112 | 33d | 0d |  | 1h | 233 |
| 114 | 12.1 | 1.1- Minuta de reunión versión0.2. | 1h | 2015-06-19 17:00 | 2015-06-19 18:00 | 112 | 33d | 0d | Lider | 1h | 233 |
| 115 | 13 | **2- Diseño version 0.2** | 0.38d | 2015-06-19 18:00 | 2015-06-22 11:00 | 113 | 33d | 0d |  | 6h | 894 |
| 116 | 13.1 | 2.1- Maquetación versión0.2. | 3h | 2015-06-19 18:00 | 2015-06-22 11:00 | 114 | 33d |  | Diseñador | 3h | 447 |
| 117 | 13.2 | 2.2- Mapa de naveción versión0.2. | 3h | 2015-06-19 18:00 | 2015-06-22 11:00 | 114 | 33d | 0d | Diseñador | 3h | 447 |
| 118 | 14 | **3- Codificación versión0.2** | 2.12d | 2015-06-22 11:00 | 2015-06-24 12:00 | 115 | 33d | 0d |  | 17h | 1,870 |
| 119 | 14.1 | 3.1- Aceptación de los módulos. | 17h | 2015-06-22 11:00 | 2015-06-24 12:00 | 117 | 33d | 0d | Programador | 17h | 1,870 |
| 120 | 15 | **4.-Pruebas versión 0.2** | 2d | 2015-06-24 12:00 | 2015-06-26 12:00 | 118 | 33d | 0d |  | 16h | 1,840 |
| 121 | 15.1 | 4.1- Pruebas de rendimiento versión0.2. | 8h | 2015-06-24 12:00 | 2015-06-25 12:00 | 119 | 33d | 0d | Tester | 8h | 920 |
| 122 | 15.2 | 4.2- Pruebas del sistema 0.2. | 8h | 2015-06-25 12:00 | 2015-06-26 12:00 | 121 | 33d | 0d | Tester | 8h | 920 |
| 123 | 16 | **5.-Implementación** | 0.75d | 2015-06-26 12:00 | 2015-06-29 10:00 | 120 | 33d |  |  | 6h | 660 |
| 124 | 16.1 | 5.1-Elección del Hosting. | 3h | 2015-06-26 12:00 | 2015-06-26 17:00 | 122 | 33d | 0d | Programador | 3h | 330 |
| 125 | 16.2 | 5.2-Copiar los archivos fuente. | 3h | 2015-06-26 17:00 | 2015-06-29 10:00 | 124 | 33d | 0d | Programador | 3h | 330 |

| ID | WBS | Task | Duration | Start | Finish | Predecessors | Total slack | Free slack | Constraint | Resources | Work | Cost |
| --- | --- | --- | --- | --- | --- | --- | --- | --- | --- | --- | --- | --- |
| 126 | 17 | **6.-Cierre del Proyecto.** | 1.5d | 2015-06-29 10:00 | 2015-06-30 16:00 |  | 33d | 0d |  |  | 12h | 2,796 |
| 127 | 17.1 | 6.1-Carta de Aceptación. | 1h | 2015-06-29 10:00 | 2015-06-29 11:00 | 125 | 33d | 0d |  | Lider | 1h | 233 |
| 128 | 17.2 | 6.2-Acta de cierrede proyectos. | 1h | 2015-06-29 11:00 | 2015-06-29 12:00 | 127 | 33d | 0d |  | Lider | 1h | 233 |
| 129 | 17.3 | 6.3-Evaluación de desempeño. | 3h | 2015-06-29 12:00 | 2015-06-29 17:00 | 128 | 33d | 0d |  | Lider | 3h | 699 |
| 130 | 17.4 | 6.4-Liberación de recursos. | 2h | 2015-06-29 17:00 | 2015-06-29 19:00 | 129 | 33d | 0d |  | Lider | 2h | 466 |
| 131 | 17.5 | 6.5-Lecciones aprendidas. | 3h | 2015-06-30 09:00 | 2015-06-30 12:00 | 130 | 33d | 0d | start no earlier than 2015-06-12 09:00 | Lider | 3h | 699 |
| 132 | 17.6 | 6.6-Informe final(cierre). | 2h | 2015-06-30 12:00 | 2015-06-30 16:00 | 131 | 33d | 0d |  | Lider | 2h | 466 |
| 133 | 18 | 7.- Entrega final versión 0.3 | 3h | 2015-06-30 16:00 | 2015-06-30 19:00 | 132, 126 | 33d |  |  | Lider | 3h | 699 |
